# ShopMetrics - Desarrollo de la plataforma

How a schedule from MS Project XML changed from version to version. A marks actual dates.

## Version 1 (saved 2026-09-28)

Note of the change: Cronograma de desarrollo en XML para Microsoft Project

| ID | WBS | Task | Duration | Start | Finish | Predecessors |
| --- | --- | --- | --- | --- | --- | --- |
| 1 | 1 | **1. Definición y arquitectura** |  | 2025-01-06 | 2025-01-31 |  |
| 2 |  | Relevamiento funcional y alcance del producto | 8d | 2025-01-06 | 2025-01-15 |  |
| 3 |  | Arquitectura de la solución y elección del stack | 7d | 2025-01-16 | 2025-01-24 | 2 |
| 4 |  | Modelo de datos y diccionario | 5d | 2025-01-27 | 2025-01-31 | 3 |
| 5 | 2 | **2. Base de datos y cimientos** |  | 2025-02-03 | 2025-02-21 | 1 |
| 6 |  | Esquema, migraciones y series temporales | 8d | 2025-02-03 | 2025-02-12 |  |
| 7 |  | Entorno de desarrollo y automatización de pruebas | 7d | 2025-02-13 | 2025-02-21 | 6 |
| 8 | 3 | **3. Integración con sistemas externos** |  | 2025-02-24 | 2025-04-04 | 5 |
| 9 |  | Conectores con puntos de venta | 12d | 2025-02-24 | 2025-03-11 |  |
| 10 |  | Ingesta de sensores de conteo | 10d | 2025-03-12 | 2025-03-25 | 9 |
| 11 |  | Monitoreo de salud de las integraciones | 8d | 2025-03-26 | 2025-04-04 | 10 |
| 12 | 4 | **4. Motor de métricas e indicadores** |  | 2025-04-07 | 2025-05-02 | 8 |
| 13 |  | Cálculo de tráfico, conversión, ventas y vacancia | 12d | 2025-04-07 | 2025-04-22 |  |
| 14 |  | Agregados por hora, zona y locatario | 8d | 2025-04-23 | 2025-05-02 | 13 |
| 15 | 5 | **5. Panel web del centro** |  | 2025-05-05 | 2025-06-11 | 12 |
| 16 |  | Sistema de diseño y navegación | 6d | 2025-05-05 | 2025-05-12 |  |
| 17 |  | Tablero de indicadores y series | 12d | 2025-05-13 | 2025-05-28 | 16 |
| 18 |  | Mapa del centro y ficha de locatarios | 10d | 2025-05-29 | 2025-06-11 | 17 |
| 19 | 6 | **6. Motor de reglas y alertas** |  | 2025-06-12 | 2025-07-16 | 15 |
| 20 |  | Definición y evaluación de reglas por umbral | 10d | 2025-06-12 | 2025-06-25 |  |
| 21 |  | Centro de alertas y ciclo de atención | 10d | 2025-06-26 | 2025-07-09 | 20 |
| 22 |  | Canales de notificación | 5d | 2025-07-10 | 2025-07-16 | 21 |
| 23 | 7 | **7. Modelos de Machine Learning** |  | 2025-07-17 | 2025-08-27 | 19 |
| 24 |  | Detección de anomalías en la operación | 12d | 2025-07-17 | 2025-08-01 |  |
| 25 |  | Predicción de riesgo de vacancia | 10d | 2025-08-04 | 2025-08-15 | 24 |
| 26 |  | Recomendación de mix de locatarios | 8d | 2025-08-18 | 2025-08-27 | 25 |
| 27 | 8 | **8. Portal del locatario** |  | 2025-08-28 | 2025-09-19 | 23 |
| 28 |  | Tablero del local y comparación con la categoría | 12d | 2025-08-28 | 2025-09-12 |  |
| 29 |  | Consentimiento sobre el uso de datos | 5d | 2025-09-15 | 2025-09-19 | 28 |
| 30 | 9 | **9. Vista móvil de operaciones** |  | 2025-09-22 | 2025-10-13 | 27 |
| 31 |  | Resolución de alertas en terreno | 10d | 2025-09-22 | 2025-10-03 |  |
| 32 |  | Historial de turno del operario | 6d | 2025-10-06 | 2025-10-13 | 31 |
| 33 | 10 | **10. Seguridad, permisos y auditoría** |  | 2025-10-14 | 2025-11-03 | 30 |
| 34 |  | Autenticación y matriz de permisos | 8d | 2025-10-14 | 2025-10-23 |  |
| 35 |  | Auditoría de accesos a datos sensibles | 7d | 2025-10-24 | 2025-11-03 | 34 |
| 36 | 11 | **11. Pruebas y salida a producción** |  | 2025-11-04 | 2025-12-04 | 33 |
| 37 |  | Pruebas integrales y corrección | 12d | 2025-11-04 | 2025-11-19 |  |
| 38 |  | Documentación y manual de uso | 5d | 2025-11-20 | 2025-11-26 | 37 |
| 39 |  | Despliegue y puesta en marcha | 6d | 2025-11-27 | 2025-12-04 | 38 |
| 40 |  | Plataforma lista para salir al mercado | 0d | 2025-12-05 | 2025-12-05 | 36 |

## Version 2 (saved 2026-09-28)

Note of the change: Solapar la fase de Machine Learning y vincular tareas en vez de fases

Last finish 2025-12-05 → 2025-10-31 (-35d).

Added:

| ID | Task | Duration | Start | Finish | Predecessors | Resources |
| --- | --- | --- | --- | --- | --- | --- |
| 37 | Integración de los modelos de ML en el panel y las alertas | 6d | 2025-09-23 | 2025-09-30 | 35, 26 | Desarrollador |

Changed:

| ID | Task | Start | Finish | Predecessors | Other |
| --- | --- | --- | --- | --- | --- |
| 5 | **2. Base de datos y cimientos** |  |  | 1 → none |  |
| 6 | Esquema, migraciones y series temporales |  |  | none → 4 |  |
| 8 | **3. Integración con sistemas externos** |  |  | 5 → none |  |
| 9 | Conectores con puntos de venta |  |  | none → 7 |  |
| 12 | **4. Motor de métricas e indicadores** |  |  | 8 → none |  |
| 13 | Cálculo de tráfico, conversión, ventas y vacancia |  |  | none → 11 |  |
| 15 | **5. Panel web del centro** |  |  | 12 → none |  |
| 16 | Sistema de diseño y navegación |  |  | none → 14 |  |
| 19 | **6. Motor de reglas y alertas** |  |  | 15 → none |  |
| 20 | Definición y evaluación de reglas por umbral |  |  | none → 18 |  |
| 23 | **7. Modelos de Machine Learning** | 2025-07-17 → 2025-06-26 (-21d) | 2025-08-27 → 2025-08-06 (-21d) | 19 → none |  |
| 24 | Predicción de riesgo de vacancia | 2025-08-04 → 2025-06-26 (-39d) | 2025-08-15 → 2025-07-09 (-37d) | 26 → 20 |  |
| 25 | Recomendación de mix de locatarios | 2025-08-18 → 2025-07-10 (-39d) | 2025-08-27 → 2025-07-21 (-37d) |  |  |
| 26 | Detección de anomalías en la operación | 2025-07-17 → 2025-07-22 (+5d) | 2025-08-01 → 2025-08-06 (+5d) | none → 25 | resources Gerente de Sistemas (CTO); Desarrollador [50%] → Gerente de Sistemas (CTO) |
| 27 | **8. Portal del locatario** | 2025-08-28 → 2025-07-17 (-42d) | 2025-09-19 → 2025-08-08 (-42d) | 23 → none |  |
| 28 | Tablero del local y comparación con la categoría | 2025-08-28 → 2025-07-17 (-42d) | 2025-09-12 → 2025-08-01 (-42d) | none → 22 |  |
| 29 | Consentimiento sobre el uso de datos | 2025-09-15 → 2025-08-04 (-42d) | 2025-09-19 → 2025-08-08 (-42d) |  |  |
| 30 | **9. Vista móvil de operaciones** | 2025-09-22 → 2025-08-11 (-42d) | 2025-10-13 → 2025-09-01 (-42d) | 27 → none |  |
| 31 | Resolución de alertas en terreno | 2025-09-22 → 2025-08-11 (-42d) | 2025-10-03 → 2025-08-22 (-42d) | none → 29 |  |
| 32 | Historial de turno del operario | 2025-10-06 → 2025-08-25 (-42d) | 2025-10-13 → 2025-09-01 (-42d) |  |  |
| 33 | **10. Seguridad, permisos y auditoría** | 2025-10-14 → 2025-09-02 (-42d) | 2025-11-03 → 2025-09-22 (-42d) | 30 → none |  |
| 34 | Autenticación y matriz de permisos | 2025-10-14 → 2025-09-02 (-42d) | 2025-10-23 → 2025-09-11 (-42d) | none → 32 |  |
| 35 | Auditoría de accesos a datos sensibles | 2025-10-24 → 2025-09-12 (-42d) | 2025-11-03 → 2025-09-22 (-42d) |  |  |
| 36 | **11. Pruebas y salida a producción** | 2025-11-04 → 2025-09-23 (-42d) | 2025-12-04 → 2025-10-31 (-34d) | 33 → none |  |
| 38 | Pruebas integrales y corrección | 2025-11-04 → 2025-10-01 (-34d) | 2025-11-19 → 2025-10-16 (-34d) | none → 37 |  |
| 39 | Documentación y manual de uso | 2025-11-20 → 2025-10-17 (-34d) | 2025-11-26 → 2025-10-23 (-34d) |  |  |
| 40 | Despliegue y puesta en marcha | 2025-11-27 → 2025-10-24 (-34d) | 2025-12-04 → 2025-10-31 (-34d) |  |  |
| 41 | Plataforma lista para salir al mercado | 2025-12-05 → 2025-10-31 (-35d) | 2025-12-05 → 2025-10-31 (-35d) | 36 → 40 |  |

## Version 3 (saved 2026-09-28)

Note of the change: Sacar a los fundadores del cronograma: el desarrollo se contrata afuera

Last finish stays 2025-10-31.

Changed:

| ID | Task | Other |
| --- | --- | --- |
| 2 | Relevamiento funcional y alcance del producto | resources Gerente de Sistemas (CTO); Gerente General (CEO) [50%] → Desarrollador senior (free lance) |
| 3 | Arquitectura de la solución y elección del stack | resources Gerente de Sistemas (CTO) → Desarrollador senior (free lance) |
| 4 | Modelo de datos y diccionario | resources Gerente de Sistemas (CTO); Desarrollador [50%] → Desarrollador senior (free lance); Desarrollador semi-senior (free lance) [50%] |
| 6 | Esquema, migraciones y series temporales | resources Desarrollador; Gerente de Sistemas (CTO) [50%] → Desarrollador semi-senior (free lance); Desarrollador senior (free lance) [50%] |
| 7 | Entorno de desarrollo y automatización de pruebas | resources Desarrollador → Desarrollador semi-senior (free lance) |
| 9 | Conectores con puntos de venta | resources Desarrollador; Gerente de Sistemas (CTO) [50%] → Desarrollador semi-senior (free lance); Desarrollador senior (free lance) [50%] |
| 10 | Ingesta de sensores de conteo | resources Desarrollador → Desarrollador semi-senior (free lance) |
| 11 | Monitoreo de salud de las integraciones | resources Desarrollador → Desarrollador semi-senior (free lance) |
| 13 | Cálculo de tráfico, conversión, ventas y vacancia | resources Desarrollador; Gerente de Sistemas (CTO) [50%] → Desarrollador semi-senior (free lance); Desarrollador senior (free lance) [50%] |
| 14 | Agregados por hora, zona y locatario | resources Desarrollador → Desarrollador semi-senior (free lance) |
| 16 | Sistema de diseño y navegación | resources Desarrollador → Desarrollador semi-senior (free lance) |
| 17 | Tablero de indicadores y series | resources Desarrollador → Desarrollador semi-senior (free lance) |
| 18 | Mapa del centro y ficha de locatarios | resources Desarrollador → Desarrollador semi-senior (free lance) |
| 20 | Definición y evaluación de reglas por umbral | resources Desarrollador; Gerente de Sistemas (CTO) [50%] → Desarrollador semi-senior (free lance); Desarrollador senior (free lance) [50%] |
| 21 | Centro de alertas y ciclo de atención | resources Desarrollador → Desarrollador semi-senior (free lance) |
| 22 | Canales de notificación | resources Desarrollador → Desarrollador semi-senior (free lance) |
| 24 | Predicción de riesgo de vacancia | resources Gerente de Sistemas (CTO) → Desarrollador senior (free lance) |
| 25 | Recomendación de mix de locatarios | resources Gerente de Sistemas (CTO) → Desarrollador senior (free lance) |
| 26 | Detección de anomalías en la operación | resources Gerente de Sistemas (CTO) → Desarrollador senior (free lance) |
| 28 | Tablero del local y comparación con la categoría | resources Desarrollador → Desarrollador semi-senior (free lance) |
| 29 | Consentimiento sobre el uso de datos | resources Desarrollador → Desarrollador semi-senior (free lance) |
| 31 | Resolución de alertas en terreno | resources Desarrollador → Desarrollador semi-senior (free lance) |
| 32 | Historial de turno del operario | resources Desarrollador → Desarrollador semi-senior (free lance) |
| 34 | Autenticación y matriz de permisos | resources Desarrollador; Gerente de Sistemas (CTO) [50%] → Desarrollador semi-senior (free lance); Desarrollador senior (free lance) [50%] |
| 35 | Auditoría de accesos a datos sensibles | resources Desarrollador → Desarrollador semi-senior (free lance) |
| 37 | Integración de los modelos de ML en el panel y las alertas | resources Desarrollador → Desarrollador semi-senior (free lance) |
| 38 | Pruebas integrales y corrección | resources Desarrollador; Gerente de Sistemas (CTO) → Desarrollador semi-senior (free lance); Desarrollador senior (free lance) |
| 39 | Documentación y manual de uso | resources Desarrollador → Desarrollador semi-senior (free lance) |
| 40 | Despliegue y puesta en marcha | resources Gerente de Sistemas (CTO); Desarrollador; Gerente General (CEO) [25%] → Desarrollador senior (free lance); Desarrollador semi-senior (free lance) |

## Version 4 (saved 2026-09-28)

Note of the change: Cuatro roles en el cronograma en vez de un desarrollador generico

Last finish 2025-10-31 → 2025-09-01 (-60d).

Changed:

| ID | Task | Start | Finish | Predecessors | Other |
| --- | --- | --- | --- | --- | --- |
| 2 | Relevamiento funcional y alcance del producto |  |  |  | resources Desarrollador senior (free lance) → Arquitecto de software (free lance) |
| 3 | Arquitectura de la solución y elección del stack |  |  |  | resources Desarrollador senior (free lance) → Arquitecto de software (free lance) |
| 4 | Modelo de datos y diccionario |  |  |  | resources Desarrollador senior (free lance); Desarrollador semi-senior (free lance) [50%] → Arquitecto de software (free lance); Desarrollador backend (free lance) [50%] |
| 6 | Esquema, migraciones y series temporales |  |  |  | resources Desarrollador semi-senior (free lance); Desarrollador senior (free lance) [50%] → Desarrollador backend (free lance); Arquitecto de software (free lance) [50%] |
| 7 | Entorno de desarrollo y automatización de pruebas |  |  |  | resources Desarrollador semi-senior (free lance) → Desarrollador backend (free lance) |
| 9 | Conectores con puntos de venta |  |  |  | resources Desarrollador semi-senior (free lance); Desarrollador senior (free lance) [50%] → Desarrollador backend (free lance); Arquitecto de software (free lance) [50%] |
| 10 | Ingesta de sensores de conteo |  |  |  | resources Desarrollador semi-senior (free lance) → Desarrollador backend (free lance) |
| 11 | Monitoreo de salud de las integraciones |  |  |  | resources Desarrollador semi-senior (free lance) → Desarrollador backend (free lance) |
| 13 | Cálculo de tráfico, conversión, ventas y vacancia |  |  |  | resources Desarrollador semi-senior (free lance); Desarrollador senior (free lance) [50%] → Desarrollador backend (free lance); Arquitecto de software (free lance) [50%] |
| 14 | Agregados por hora, zona y locatario |  |  |  | resources Desarrollador semi-senior (free lance) → Desarrollador backend (free lance) |
| 15 | **5. Panel web del centro** | 2025-05-05 → 2025-04-23 (-12d) | 2025-06-11 → 2025-05-30 (-12d) |  |  |
| 16 | Sistema de diseño y navegación | 2025-05-05 → 2025-04-23 (-12d) | 2025-05-12 → 2025-04-30 (-12d) | 14 → 13 | resources Desarrollador semi-senior (free lance) → Desarrollador frontend (free lance) |
| 17 | Tablero de indicadores y series | 2025-05-13 → 2025-05-01 (-12d) | 2025-05-28 → 2025-05-16 (-12d) |  | resources Desarrollador semi-senior (free lance) → Desarrollador frontend (free lance) |
| 18 | Mapa del centro y ficha de locatarios | 2025-05-29 → 2025-05-19 (-10d) | 2025-06-11 → 2025-05-30 (-12d) |  | resources Desarrollador semi-senior (free lance) → Desarrollador frontend (free lance) |
| 19 | **6. Motor de reglas y alertas** | 2025-06-12 → 2025-05-05 (-38d) | 2025-07-16 → 2025-06-13 (-33d) |  |  |
| 20 | Definición y evaluación de reglas por umbral | 2025-06-12 → 2025-05-05 (-38d) | 2025-06-25 → 2025-05-16 (-40d) | 18 → 14 | resources Desarrollador semi-senior (free lance); Desarrollador senior (free lance) [50%] → Desarrollador backend (free lance); Arquitecto de software (free lance) [50%] |
| 21 | Canales de notificación | 2025-07-10 → 2025-05-19 (-52d) | 2025-07-16 → 2025-05-23 (-54d) | 22 → 20 | resources Desarrollador semi-senior (free lance) → Desarrollador backend (free lance) |
| 22 | Centro de alertas y ciclo de atención | 2025-06-26 → 2025-06-02 (-24d) | 2025-07-09 → 2025-06-13 (-26d) | 20 → 18, 20 | resources Desarrollador semi-senior (free lance) → Desarrollador frontend (free lance) |
| 23 | **7. Modelos de Machine Learning** | 2025-06-26 → 2025-05-05 (-52d) | 2025-08-06 → 2025-06-13 (-54d) |  |  |
| 24 | Predicción de riesgo de vacancia | 2025-06-26 → 2025-05-05 (-52d) | 2025-07-09 → 2025-05-16 (-54d) | 20 → 14 | resources Desarrollador senior (free lance) → Ingeniero de machine learning (free lance) |
| 25 | Recomendación de mix de locatarios | 2025-07-10 → 2025-05-19 (-52d) | 2025-07-21 → 2025-05-28 (-54d) |  | resources Desarrollador senior (free lance) → Ingeniero de machine learning (free lance) |
| 26 | Detección de anomalías en la operación | 2025-07-22 → 2025-05-29 (-54d) | 2025-08-06 → 2025-06-13 (-54d) |  | resources Desarrollador senior (free lance) → Ingeniero de machine learning (free lance) |
| 27 | **8. Portal del locatario** | 2025-07-17 → 2025-06-16 (-31d) | 2025-08-08 → 2025-07-08 (-31d) |  |  |
| 28 | Tablero del local y comparación con la categoría | 2025-07-17 → 2025-06-16 (-31d) | 2025-08-01 → 2025-07-01 (-31d) | 21 → 22 | resources Desarrollador semi-senior (free lance) → Desarrollador frontend (free lance) |
| 29 | Consentimiento sobre el uso de datos | 2025-08-04 → 2025-07-02 (-33d) | 2025-08-08 → 2025-07-08 (-31d) |  | resources Desarrollador semi-senior (free lance) → Desarrollador frontend (free lance) |
| 30 | **9. Vista móvil de operaciones** | 2025-08-11 → 2025-07-09 (-33d) | 2025-09-01 → 2025-07-30 (-33d) |  |  |
| 31 | Resolución de alertas en terreno | 2025-08-11 → 2025-07-09 (-33d) | 2025-08-22 → 2025-07-22 (-31d) |  | resources Desarrollador semi-senior (free lance) → Desarrollador frontend (free lance) |
| 32 | Historial de turno del operario | 2025-08-25 → 2025-07-23 (-33d) | 2025-09-01 → 2025-07-30 (-33d) |  | resources Desarrollador semi-senior (free lance) → Desarrollador frontend (free lance) |
| 33 | **10. Seguridad, permisos y auditoría** | 2025-09-02 → 2025-05-26 (-99d) | 2025-09-22 → 2025-06-13 (-101d) |  |  |
| 34 | Autenticación y matriz de permisos | 2025-09-02 → 2025-05-26 (-99d) | 2025-09-11 → 2025-06-04 (-99d) | 32 → 21 | resources Desarrollador semi-senior (free lance); Desarrollador senior (free lance) [50%] → Desarrollador backend (free lance); Arquitecto de software (free lance) [50%] |
| 35 | Auditoría de accesos a datos sensibles | 2025-09-12 → 2025-06-05 (-99d) | 2025-09-22 → 2025-06-13 (-101d) |  | resources Desarrollador semi-senior (free lance) → Desarrollador backend (free lance) |
| 36 | **11. Pruebas y salida a producción** | 2025-09-23 → 2025-06-16 (-99d) | 2025-10-31 → 2025-09-01 (-60d) |  |  |
| 37 | Integración de los modelos de ML en el panel y las alertas | 2025-09-23 → 2025-06-16 (-99d) | 2025-09-30 → 2025-06-23 (-99d) |  | resources Desarrollador semi-senior (free lance) → Desarrollador backend (free lance) |
| 38 | Pruebas integrales y corrección | 2025-10-01 → 2025-07-31 (-62d) | 2025-10-16 → 2025-08-15 (-62d) | 37 → 37, 32 | resources Desarrollador semi-senior (free lance); Desarrollador senior (free lance) → Arquitecto de software (free lance); Desarrollador backend (free lance) [50%]; Desarrollador frontend (free lance) [50%] |
| 39 | Documentación y manual de uso | 2025-10-17 → 2025-08-18 (-60d) | 2025-10-23 → 2025-08-22 (-62d) |  | resources Desarrollador semi-senior (free lance) → Arquitecto de software (free lance) [50%]; Desarrollador backend (free lance) [50%] |
| 40 | Despliegue y puesta en marcha | 2025-10-24 → 2025-08-25 (-60d) | 2025-10-31 → 2025-09-01 (-60d) |  | resources Desarrollador senior (free lance); Desarrollador semi-senior (free lance) → Arquitecto de software (free lance); Desarrollador backend (free lance) |
| 41 | Plataforma lista para salir al mercado | 2025-10-31 → 2025-09-01 (-60d) | 2025-10-31 → 2025-09-01 (-60d) |  |  |
